Schedule from ProjectLibre, 2010-03-15 to 2024-06-01.

## Calendars

- Standard[Imported]: Mon-Sun 16:00-20:00.

## Resources

| Resource |
| --- |
| Unassigned |
| Architect |
| Architecture Reviewer |
| Business-Process Analyst |
| Business Designer |
| Business-Model Reviewer |
| Code Reviewer |
| Configuration Manager |
| Course Developer |
| Database Designer |
| Deployment Manager |
| Design Reviewer |
| Designer |
| Implementer |
| Integration Tester |
| Performance Tester |
| Process Engineer |
| Project Manager |
| Requirements Reviewer |
| Stakeholder |
| System Administrator |
| System Analyst |
| System Integrator |
| System Tester |
| Technical Writer |
| Test Designer |
| Tool Smith |
| Use-Case Author |
| User-Interface Designer |
| Milan |

## Schedule

| ID | WBS | Task | Type | Duration | Start | Finish | Predecessors | Baseline start | Baseline finish | Constraint |
| --- | --- | --- | --- | --- | --- | --- | --- | --- | --- | --- |
| 1 | 1 | **Očekivani rezultati** |  | 45.12d | 2024-03-03 | 2024-06-01 |  | 1998-06-11 | 1998-10-19 | start no earlier than 2024-03-03 |
| 2 | 1.1 | Početak projekta | milestone | 0d | 2024-03-03 | 2024-03-03 | 15SS | 1998-06-11 | 1998-06-11 |  |
| 3 | 1.2 | Vizija sistema | milestone | 0d | 2024-03-09 | 2024-03-09 | 18 | 1998-06-17 | 1998-06-17 | start no earlier than 2024-03-09 |
| 4 | 1.3 | Dokument o zahtevima | milestone | 0d | 2024-03-03 | 2024-03-03 | 23 |  |  |  |
| 5 | 1.4 | Arhitekturni prototip | milestone | 0d | 2024-03-03 | 2024-03-03 | 24 |  |  |  |
| 6 | 1.5 | Prototip korisničkog interfejsa | milestone | 0d | 2024-03-03 | 2024-03-03 | 26 |  |  |  |
| 7 | 1.6 | Arhitekturni projekat | milestone | 0d | 2024-03-03 | 2024-03-03 | 27 | 1998-08-20 | 1998-08-20 |  |
| 8 | 1.7 | Detaljni projekat | milestone | 0d | 2024-03-03 | 2024-03-03 | 30 | 1998-10-06 | 1998-10-06 |  |
| 9 | 1.8 | Beta verzija | milestone | 0d | 2024-03-03 | 2024-03-03 | 31 | 1998-10-19 | 1998-10-19 |  |
| 10 | 1.9 | Plan testiranja | milestone | 0d | 2024-03-03 | 2024-03-03 | 32 |  |  |  |
| 11 | 1.10 | Izveštaj o testiranju | milestone | 0d | 2024-03-03 | 2024-03-03 | 38 |  |  |  |
| 12 | 1.11 | Konačna verzija | milestone | 0d | 2024-03-03 | 2024-03-03 | 35 |  |  |  |
| 13 | 1.12 | Korisničko uputstvo | milestone | 0d | 2024-03-03 | 2024-03-03 | 42 |  |  |  |
| 14 | 1.13 | Prezentacija proizvoda | milestone | 45.12d | 2024-03-03 | 2024-06-01 | 40 |  |  |  |
| 15 | 2 | **Faza planiranja projekta** |  | 7d | 2010-03-15 | 2010-03-28 |  | 1998-06-11 | 1998-06-17 |  |
| 16 | 2.1 | **Preliminarna iteracija** |  | 7d | 2010-03-15 | 2010-03-28 |  | 1998-06-11 | 1998-06-17 |  |
| 18 | 2.1.2 | Izrada vizije sistema |  | 2d | 2010-03-18 | 2010-03-21 |  | 1998-06-11 | 1998-06-17 |  |
| 19 | 2.1.3 | Modelovanje domena |  | 0.5d | 2010-03-22 | 2010-03-22 | 18 | 1998-06-11 | 1998-06-17 |  |
| 20 | 2.1.4 | Analiza slučajeva korišćenja |  | 3d | 2010-03-23 | 2010-03-28 | 19 | 1998-06-19 | 1998-06-23 |  |
| 21 | 3 | **Faza razrade projekta** |  | 10.5d | 2010-03-29 | 2010-04-18 | 15 | 1998-06-18 | 1998-08-20 |  |
| 22 | 3.1 | **Iteracija R1 - Razvoj arhitekturnog prototipa** |  | 10.5d | 2010-03-29 | 2010-04-18 |  | 1998-06-18 | 1998-07-20 |  |
| 23 | 3.1.1 | Izrada dokumenta o zahtevima |  | 3.5d | 2010-03-29 | 2010-04-04 |  | 1998-06-19 | 1998-06-25 |  |
| 24 | 3.1.2 | Implementacija arhitekturnog prototipa |  | 5d | 2010-03-29 | 2010-04-07 |  | 1998-07-01 | 1998-07-10 |  |
| 25 | 3.1.3 | Testiranje arhitekture |  | 0.5d | 2010-04-08 | 2010-04-08 | 24 | 1998-07-08 | 1998-07-16 |  |
| 26 | 3.1.4 | Implementacija prototipa korisničkog interfejsa |  | 1.5d | 2010-04-09 | 2010-04-11 | 25 | 1998-06-18 | 1998-07-20 |  |
| 27 | 3.1.5 | Izrada arhitekturnog projekta |  | 3.5d | 2010-04-12 | 2010-04-18 | 26 | 1998-06-23 | 1998-07-06 |  |

| ID | WBS | Task | Duration | Start | Finish | Predecessors | Baseline start | Baseline finish |
| --- | --- | --- | --- | --- | --- | --- | --- | --- |
| 28 | 4 | **Faza izrade projekta** | 14d | 2010-04-19 | 2010-05-16 | 21 | 1998-08-21 | 1998-10-06 |
| 29 | 4.1 | **Iteracija I1 - Razvoj beta verzije** | 11.5d | 2010-04-19 | 2010-05-11 |  | 1998-08-21 | 1998-09-04 |
| 30 | 4.1.1 | Izrada detaljnog projekta | 7d | 2010-04-19 | 2010-05-02 |  |  |  |
| 31 | 4.1.2 | Implementacija beta verzije | 8.5d | 2010-04-19 | 2010-05-05 |  | 1998-08-24 | 1998-08-31 |
| 32 | 4.1.3 | Izrada plana testiranja | 2d | 2010-05-06 | 2010-05-09 | 31 |  |  |
| 33 | 4.1.4 | Testiranje sistema | 1d | 2010-05-10 | 2010-05-11 | 32 | 1998-08-24 | 1998-09-02 |
| 34 | 4.1.5 | Izrada izveštaja o testiranju | 1d | 2010-05-10 | 2010-05-11 | 32 | 1998-08-21 | 1998-09-04 |
| 35 | 4.2 | **Iteracija I2 - Razvoj konačne verzije** | 2.5d | 2010-05-12 | 2010-05-16 | 29 | 1998-09-07 | 1998-09-21 |
| 36 | 4.2.1 | Implementacija konačne verzije | 2d | 2010-05-12 | 2010-05-15 |  | 1998-09-08 | 1998-09-15 |
| 37 | 4.2.2 | Testiranje konačne verzije | 0.5d | 2010-05-16 | 2010-05-16 | 36 | 1998-09-08 | 1998-09-17 |
| 38 | 4.2.3 | Ažuriranje izveštaja o testiranju | 0.5d | 2010-05-16 | 2010-05-16 | 36 | 1998-09-07 | 1998-09-21 |
| 39 | 5 | **Faza okončanja projekta** | 7d | 2010-05-17 | 2010-05-30 | 35 | 1998-10-07 | 1998-10-19 |
| 40 | 5.1 | **Iteracija O1 - Instalacija sistema** | 7d | 2010-05-17 | 2010-05-30 |  | 1998-10-07 | 1998-10-19 |
| 41 | 5.1.1 | Sređivanje projektne dokumentacije | 3.5d | 2010-05-17 | 2010-05-23 |  |  |  |
| 42 | 5.1.2 | Izrada korisničkog uputstva | 3d | 2010-05-24 | 2010-05-29 | 41 | 1998-10-07 | 1998-10-19 |
| 43 | 5.1.3 | Instalacija sistema | 0.5d | 2010-05-30 | 2010-05-30 | 42 |  |  |
